# TMS/DMS

Schedule from a web Gantt chart, 2025-02-26 to 2025-10-17.
Saturdays and Sundays are off

## Schedule

| ID | WBS | Task | Duration | Start | Finish | Predecessors | Status |
| --- | --- | --- | --- | --- | --- | --- | --- |
| 2 | 1 | **需求** | 38d | 2025-02-26 | 2025-04-18 |  |  |
| 3 | 1.1 | 需求收集和URS起草 | 13d | 2025-02-26 | 2025-03-14 |  |  |
| 4 | 1.2 | 需求审核和URS签批 | 10d | 2025-03-17 | 2025-03-28 | 3 | waiting |
| 5 | 1.3 | 系统试用&答疑 | 15d | 2025-03-31 | 2025-04-18 | 4 | waiting |
| 6 | 2 | **招投标** | 50d | 2025-03-17 | 2025-05-23 |  | waiting |
| 7 | 2.1 | 供应商书面审计 | 5d | 2025-03-17 | 2025-03-21 |  | waiting |
| 8 | 2.2 | 供应商准备 | 10d | 2025-04-21 | 2025-05-02 | 5 | waiting |
| 9 | 2.3 | 开标 | 5d | 2025-05-05 | 2025-05-09 | 8 | waiting |
| 10 | 2.4 | 供应商现场审计 | 10d | 2025-05-12 | 2025-05-23 | 9 | waiting |
| 11 | 3 | 方案设计&系统实施 | 55d | 2025-05-26 | 2025-08-08 | 10 | waiting |
| 12 | 4 | **验证** | 30d | 2025-08-11 | 2025-09-19 |  |  |
| 13 | 4.1 | VP签署 | 1d | 2025-08-11 | 2025-08-11 |  |  |
| 14 | 4.2 | 验证资料和准备 | 10d | 2025-08-11 | 2025-08-22 | 11 | waiting |
| 15 | 4.3 | 验证方案审核和签批 | 5d | 2025-08-25 | 2025-08-29 | 14 | waiting |
| 16 | 4.4 | 验证执行 | 10d | 2025-09-01 | 2025-09-12 | 15 | waiting |
| 17 | 4.5 | 验证报告签批 | 5d | 2025-09-15 | 2025-09-19 | 16 | waiting |
| 18 | 5 | **培训** | 15d | 2025-09-22 | 2025-10-10 |  |  |
| 19 | 5.1 | 培训准备 | 10d | 2025-09-22 | 2025-10-03 | 17 | waiting |
| 20 | 5.2 | 培训 | 5d | 2025-10-06 | 2025-10-10 | 19 | waiting |
| 21 | 6 | 部署 | 5d | 2025-10-13 | 2025-10-17 | 20 | waiting |
